# Lykhosherstov_SENG511_TA2_BP2

Schedule from MS Project, 2018-11-26 to 2019-02-22, costs in $, A marks actual dates.

## Calendars

- Standard: Mon-Fri 08:00-12:00, 13:00-17:00; Sat-Sun off.

## Resources

| Resource | Rate |
| --- | --- |
| Resource1 AI | 80 |
| Resource2 DT | 80 |
| Resource3 AI | 80 |
| Resource4 AD | 80 |
| Resource5 DIT | 80 |

## Schedule

| ID | WBS | Task | Duration | Start | Finish | Predecessors | Complete | Remaining | Total slack | Resources | Work | Actual work | Cost | Actual cost |
| --- | --- | --- | --- | --- | --- | --- | --- | --- | --- | --- | --- | --- | --- | --- |
| 1 | 1 | **Point reward system based on distance/time driven(distance x time spent)** | 19.38d | 2018-11-26 A | 2018-12-21 A |  | 100% |  |  |  | 285h | 285h | 22,800 | 22,800 |
| 2 | 1.1 | Analysis | 30h | 2018-11-26 A | 2018-11-29 A |  | 100% |  |  | Resource1 AI | 30h | 30h | 2,400 | 2,400 |
| 3 | 1.2 | Design | 50h | 2018-11-29 A | 2018-12-07 A | 2 | 100% |  |  | Resource1 AI | 50h | 50h | 4,000 | 4,000 |
| 4 | 1.3 | Implementation | 50h | 2018-11-29 A | 2018-12-07 A | 3SS | 100% |  |  | Resource3 AI | 50h | 50h | 4,000 | 4,000 |
| 5 | 1.4 | Testing | 75h | 2018-12-10 A | 2018-12-21 A | 4FF, 3 | 100% |  |  | Resource2 DT | 75h | 75h | 6,000 | 6,000 |
| 6 | 1.5 | **Payment system (credit debit, BC, etc.)** | 2.5d | 2018-11-29 A | 2018-12-04 A | 2 | 100% |  |  |  | 30h | 30h | 2,400 | 2,400 |
| 7 | 1.5.1 | Design | 10h | 2018-11-29 A | 2018-11-30 A |  | 100% |  |  | Resource2 DT | 10h | 10h | 800 | 800 |
| 8 | 1.5.2 | Implementation | 10h | 2018-11-29 A | 2018-11-30 A | 7SS | 100% |  |  | Resource5 DIT | 10h | 10h | 800 | 800 |
| 9 | 1.5.3 | Testing | 10h | 2018-12-03 A | 2018-12-04 A | 8FF, 7 | 100% |  |  | Resource5 DIT | 10h | 10h | 800 | 800 |
| 10 | 1.6 | **Carpool option** | 5d | 2018-12-04 A | 2018-12-11 A | 9 | 100% |  |  |  | 50h | 50h | 4,000 | 4,000 |
| 11 | 1.6.1 | Design | 20h | 2018-12-04 A | 2018-12-06 A |  | 100% |  |  | Resource4 AD | 20h | 20h | 1,600 | 1,600 |
| 12 | 1.6.2 | Implementation | 10h | 2018-12-04 A | 2018-12-05 A | 11SS | 100% |  |  | Resource5 DIT | 10h | 10h | 800 | 800 |
| 13 | 1.6.3 | Testing | 20h | 2018-12-06 A | 2018-12-11 A | 12FF, 11 | 100% |  |  | Resource4 AD | 20h | 20h | 1,600 | 1,600 |
| 14 | 2 | **Make money through Distance x Time** | 11.25d | 2018-12-11 A | 2018-12-26 A |  | 100% |  |  |  | 150h | 150h | 12,000 | 12,000 |
| 15 | 2.1 | Design | 40h | 2018-12-11 A | 2018-12-18 A | 13 | 100% |  |  | Resource5 DIT | 40h | 40h | 3,200 | 3,200 |
| 16 | 2.2 | Implementation | 60h | 2018-12-11 A | 2018-12-20 A | 15SS | 100% |  |  | Resource1 AI | 60h | 60h | 4,800 | 4,800 |
| 17 | 2.3 | Testing | 50h | 2018-12-18 A | 2018-12-26 A | 16FF, 15 | 100% |  |  | Resource5 DIT | 50h | 50h | 4,000 | 4,000 |
| 18 | 3 | **Ability to screen users for valid drivers license and past driving offences** | 11.25d | 2018-12-21 A | 2019-01-07 |  | 61% | 4.42d | 33.5d |  | 140h | 85h | 11,200 | 6,800 |
| 19 | 3.1 | Analysis | 15h | 2018-12-21 A | 2018-12-25 A | 5 | 100% |  |  | Resource1 AI | 15h | 15h | 1,200 | 1,200 |
| 20 | 3.2 | Design | 20h | 2018-12-25 A | 2018-12-27 A | 19 | 100% |  |  | Resource4 AD | 20h | 20h | 1,600 | 1,600 |
| 21 | 3.3 | Implementation | 50h | 2018-12-25 A | 2019-01-02 A | 20SS | 100% |  |  | Resource3 AI | 50h | 50h | 4,000 | 4,000 |
| 22 | 3.4 | Testing | 55h | 2018-12-27 | 2019-01-07 | 21FF, 20 |  |  | 33.5d | Resource2 DT | 55h |  | 4,400 |  |
| 23 | 4 | **GPS Car location services so you know where it is** | 12.38d | 2018-12-26 | 2019-01-11 |  |  |  | 0d |  | 164h |  | 13,120 |  |
| 24 | 4.1 | Design | 66h | 2018-12-26 | 2019-01-07 | 17 |  |  | 0d | Resource5 DIT | 66h |  | 5,280 |  |
| 25 | 4.2 | Implementation | 65h | 2018-12-26 | 2019-01-07 | 24SS |  |  | 4.25d | Resource1 AI | 65h |  | 5,200 |  |
| 26 | 4.3 | Testing | 33h | 2019-01-07 | 2019-01-11 | 25FF, 24 |  |  | 0d | Resource2 DT | 33h |  | 2,640 |  |

| ID | WBS | Task | Type | Duration | Start | Finish | Predecessors | Total slack | Free slack | Resources | Work | Cost |
| --- | --- | --- | --- | --- | --- | --- | --- | --- | --- | --- | --- | --- |
| 27 | 5 | **Easy way to report an accident/emergency** |  | 10.62d | 2019-01-07 | 2019-01-22 |  | 2.75d |  |  | 135h | 10,800 |
| 28 | 5.1 | Design |  | 50h | 2019-01-07 | 2019-01-15 | 24 | 12.12d | 0d | Resource4 AD | 50h | 4,000 |
| 29 | 5.2 | Implementation |  | 50h | 2019-01-07 | 2019-01-15 | 28SS | 7.12d | 4.38d | Resource1 AI | 50h | 4,000 |
| 30 | 5.3 | Testing |  | 35h | 2019-01-16 | 2019-01-22 | 29FF, 28 | 12.12d | 0d | Resource2 DT | 35h | 2,800 |
| 31 | 6 | **In car virtual assistant** |  | 10d | 2019-01-11 | 2019-01-25 | 26 | 0d |  |  | 160h | 12,800 |
| 32 | 6.1 | Design |  | 55h | 2019-01-11 | 2019-01-22 |  | 0d |  | Resource5 DIT | 55h | 4,400 |
| 33 | 6.2 | Implementation |  | 80h | 2019-01-11 | 2019-01-25 | 32SS | 0d |  | Resource3 AI | 80h | 6,400 |
| 34 | 6.3 | Testing |  | 25h | 2019-01-22 | 2019-01-25 | 33FF, 32 | 0d |  | Resource2 DT | 25h | 2,000 |
| 35 | 7 | **Different car categories(SUV, sport, truck)** |  | 20d | 2019-01-22 | 2019-02-19 | 30 | 2.75d |  |  | 295h | 23,600 |
| 36 | 7.1 | Design |  | 55h | 2019-01-22 | 2019-01-31 |  | 12.12d | 0d | Resource4 AD | 55h | 4,400 |
| 37 | 7.2 | Implementation |  | 135h | 2019-01-22 | 2019-02-14 | 36SS | 5.88d | 3.12d | Resource1 AI | 135h | 10,800 |
| 38 | 7.3 | Testing |  | 105h | 2019-01-31 | 2019-02-19 | 37FF, 36 | 2.75d |  | Resource5 DIT | 105h | 8,400 |
| 39 | 8 | **Well designed data base so the stakeholder can collect data from his app users easily** |  | 19.25d | 2019-01-25 | 2019-02-22 | 34 | 0d |  |  | 264h | 21,120 |
| 40 | 8.1 | Analysis |  | 22h | 2019-01-25 | 2019-01-30 |  | 0d |  | Resource3 AI | 22h | 1,760 |
| 41 | 8.2 | Design | milestone | 0h | 2019-01-30 | 2019-01-30 | 40 | 0d |  |  |  |  |
| 42 | 8.3 | Implementation |  | 110h | 2019-01-30 | 2019-02-19 | 41SS | 2.75d |  | Resource3 AI | 110h | 8,800 |
| 43 | 8.4 | Testing |  | 132h | 2019-01-30 | 2019-02-22 | 42FF, 41 | 0d |  | Resource2 DT | 132h | 10,560 |
